# Cronograma SISPPAFUT

Schedule from MS Project, 2012-03-19 to 2012-11-30, A marks actual dates.

## Calendars

- Calendario SISPPAFUT: Mon-Fri 09:00-13:00, 15:00-19:00; Sat-Sun off. Exceptions (off unless hours are given): 2012-03-20 to 2012-12-05 (recurring), 2012-05-07 to 2012-05-11, 2012-07-02 to 2012-08-17, 2012-10-08 to 2012-10-12.

## Resources

| Resource |
| --- |
| Michael Martínez |
| Desarrollador |
| Analista QA |

## Schedule

| ID | WBS | Task | Duration | Start | Finish | Predecessors | Complete | Remaining | Total slack | Free slack | Constraint | Resources | Work | Actual work |
| --- | --- | --- | --- | --- | --- | --- | --- | --- | --- | --- | --- | --- | --- | --- |
| 1 | 1 | **Sistema Inteligente para Pronósticos de Partidos de Fútbol** | 84d | 2012-03-19 09:00 A | 2012-11-30 19:00 |  | 1% | 82.99d | 0d |  |  |  | 972h | 8h |
| 2 | 1.1 | **Planificación** | 1d | 2012-03-19 09:00 A | 2012-03-19 19:00 A |  | 100% |  |  |  |  |  | 8h | 8h |
| 3 | 1.1.1 | Elaboraración del Glosario | 1d | 2012-03-19 09:00 A | 2012-03-19 19:00 A |  | 100% |  |  |  |  | Michael Martínez | 8h | 8h |
| 4 | 1.2 | **Product Backlog** | 1d | 2012-03-22 09:00 | 2012-03-22 19:00 |  |  |  | 2d |  |  |  | 8h |  |
| 5 | 1.2.1 | Creación de User Stories | 0.5d | 2012-03-22 09:00 | 2012-03-22 13:00 | 3 |  |  | 2d | 0d | start no earlier than 2012-03-22 09:00 | Michael Martínez | 4h |  |
| 6 | 1.2.2 | Priorización de User Stories | 0.5d | 2012-03-22 15:00 | 2012-03-22 19:00 | 5 |  |  | 2d | 0d | start no earlier than 2012-03-22 09:00 | Michael Martínez | 4h |  |
| 7 | 1.3 | **Planificación de los Sprints** | 2d | 2012-03-23 09:00 | 2012-03-26 19:00 |  |  |  | 2d |  |  |  | 16h |  |
| 8 | 1.3.1 | Determinar Sprints | 0.5d | 2012-03-23 09:00 | 2012-03-23 13:00 | 6 |  |  | 2d | 0d |  | Michael Martínez | 4h |  |
| 9 | 1.3.2 | Determinar los Sprints Backlog | 0.5d | 2012-03-23 15:00 | 2012-03-23 19:00 | 8 |  |  | 2d | 0d |  | Michael Martínez | 4h |  |
| 10 | 1.3.3 | Determinar duración de cada Sprint | 0.5d | 2012-03-26 09:00 | 2012-03-26 13:00 | 9 |  |  | 2d | 0d |  | Michael Martínez | 4h |  |
| 11 | 1.3.4 | Determinar Releases | 0.5d | 2012-03-26 15:00 | 2012-03-26 19:00 | 10 |  |  | 2d | 0d |  | Michael Martínez | 4h |  |
| 12 | 1.4 | **Diseño de la Red Neuronal** | 1.5d | 2012-03-29 09:00 | 2012-03-30 13:00 |  |  |  | 78.5d |  |  |  | 12h |  |
| 13 | 1.4.1 | Análisis de las características | 0.5d | 2012-03-29 09:00 | 2012-03-29 13:00 | 11 |  |  | 78.5d | 0d | start no earlier than 2012-03-29 09:00 | Michael Martínez | 4h |  |
| 14 | 1.4.2 | Análisis de los patrones | 0.5d | 2012-03-29 15:00 | 2012-03-29 19:00 | 13 |  |  | 78.5d | 0d |  | Michael Martínez | 4h |  |
| 15 | 1.4.3 | Diseño de la RNA | 0.5d | 2012-03-30 09:00 | 2012-03-30 13:00 | 14 |  |  | 78.5d |  |  | Michael Martínez | 4h |  |
| 16 | 1.5 | **Construcción** | 33d | 2012-03-29 09:00 | 2012-06-18 19:00 |  |  |  | 2d |  |  |  | 352h |  |
| 17 | 1.5.1 | Sprint 1 | 11d | 2012-03-29 09:00 | 2012-04-20 19:00 | 11 |  |  | 2d | 0d | start no earlier than 2012-03-29 09:00 | Michael Martínez; Desarrollador | 176h |  |
| 18 | 1.5.2 | Sprint 2 | 11d | 2012-04-23 09:00 | 2012-05-24 19:00 | 17 |  |  | 2d | 0d |  | Michael Martínez; Desarrollador | 176h |  |
| 19 | 1.5.3 | Sprint 3 | 11d | 2012-05-25 09:00 | 2012-06-18 19:00 | 18 |  |  | 2d | 0d |  |  |  |  |
| 20 | 1.6 | Lanzamiento de Release 1 | 1d | 2012-06-21 09:00 | 2012-06-21 19:00 | 19 |  |  | 2d | 0d |  | Michael Martínez | 8h |  |
| 21 | 1.7 | Cierre parcial del Producto | 1d | 2012-06-22 09:00 | 2012-06-22 19:00 | 20 |  |  | 2d | 0d |  | Michael Martínez | 8h |  |
| 22 | 1.8 | Presentación Parcial del Taller de Proyecto 1 | 1d | 2012-06-25 09:00 | 2012-06-25 19:00 | 21 |  |  | 2d |  |  | Michael Martínez | 8h |  |
| 23 | 1.9 | **Contrucción** | 27d | 2012-08-20 09:00 | 2012-10-26 19:00 |  |  |  | 0d |  |  |  | 432h |  |
| 24 | 1.9.1 | Sprint 4 | 9d | 2012-08-20 09:00 | 2012-09-07 19:00 | 22 |  |  | 0d |  | start no earlier than 2012-08-20 09:00 | Michael Martínez; Desarrollador | 144h |  |
| 25 | 1.9.2 | Sprint 5 | 9d | 2012-09-10 09:00 | 2012-09-28 19:00 | 24 |  |  | 0d |  |  | Michael Martínez; Desarrollador | 144h |  |
| 26 | 1.9.3 | Sprint 6 | 9d | 2012-10-01 09:00 | 2012-10-26 19:00 | 25 |  |  | 0d |  |  | Michael Martínez; Desarrollador | 144h |  |

| ID | WBS | Task | Duration | Start | Finish | Predecessors | Total slack | Resources | Work |
| --- | --- | --- | --- | --- | --- | --- | --- | --- | --- |
| 27 | 1.10 | **Entrenamiento** | 11d | 2012-10-29 09:00 | 2012-11-22 19:00 |  | 0d |  | 88h |
| 28 | 1.10.1 | Implementación del módulo de entrenamiento | 2d | 2012-10-29 09:00 | 2012-11-01 19:00 | 26 | 0d | Michael Martínez | 16h |
| 29 | 1.10.2 | Entrenamiento del Sistema | 9d | 2012-11-02 09:00 | 2012-11-22 19:00 | 28 | 0d | Michael Martínez | 72h |
| 30 | 1.11 | **Pruebas de Sistemas Expertos** | 1d | 2012-11-23 09:00 | 2012-11-23 19:00 |  | 0d |  | 8h |
| 31 | 1.11.1 | Validación y verificación de Sistemas Expertos | 1d | 2012-11-23 09:00 | 2012-11-23 19:00 | 29 | 0d | Michael Martínez | 8h |
| 32 | 1.12 | Lanzamiento de Release 2 | 1d | 2012-11-26 09:00 | 2012-11-26 19:00 | 31 | 0d | Michael Martínez | 8h |
| 33 | 1.13 | Cierre final del Producto | 1d | 2012-11-29 09:00 | 2012-11-29 19:00 | 32 | 0d | Michael Martínez | 8h |
| 34 | 1.14 | Presentación Final del Taller de Proyecto 2 | 1d | 2012-11-30 09:00 | 2012-11-30 19:00 | 33 | 0d | Michael Martínez | 8h |
